# PRIMERA VERSIÓN_EDT_PM05

Schedule from MS Project, 2011-03-28 to 2011-07-18, A marks actual dates.
Hewlett-Packard

## Calendars

- Estándar: Mon-Fri 09:00-13:00, 15:00-19:00; Sat-Sun off. Exceptions (off unless hours are given): 2011-04-21 to 2011-04-22 (Semana Santa).

## Schedule

| ID | WBS | Task | Type | Duration | Start | Finish | Predecessors | Complete | Remaining | Total slack | Constraint |
| --- | --- | --- | --- | --- | --- | --- | --- | --- | --- | --- | --- |
| 1 | 1 | **Análisis y Diseño de la Arquitectura de Procesos de una pequeña minería- Proceso de Logística** |  | 79d | 2011-03-28 A | 2011-07-18 |  | 36% | 50.86d | 0d |  |
| 2 | 1.1 | **Inicio y Planificación** |  | 1d | 2011-03-28 A | 2011-03-28 A |  | 100% |  |  |  |
| 3 | 1.1.1 | Elaboración del Project Charter |  | 1d | 2011-03-28 A | 2011-03-28 A |  | 100% |  |  |  |
| 4 | 1.1.2 | Elaboración del Project Plan |  | 1d | 2011-03-28 A | 2011-03-28 A |  | 100% |  |  |  |
| 5 | 1.2 | **Elaboración de entregables** |  | 49d | 2011-03-29 A | 2011-06-08 |  | 57% | 21.08d | 29d |  |
| 6 | 1.2.1 | Investigación Inicial |  | 3d | 2011-03-29 A | 2011-03-31 A | 4 | 100% |  |  |  |
| 7 | 1.2.2 | Elaboración de Cronograma |  | 1d | 2011-03-30 A | 2011-03-30 A | 6SS | 100% |  |  | start no earlier than 2011-03-30 |
| 8 | 1.2.3 | Elaboración de la Matriz de Riesgos |  | 2d | 2011-03-30 A | 2011-03-31 A | 7SS | 100% |  |  |  |
| 9 | 1.2.4 | Elaboración de los primeros dos capítulos |  | 4d | 2011-04-01 A | 2011-04-06 A | 8 | 100% |  |  |  |
| 10 | 1.2.5 | **Creación de Artefactos Base** |  | 5.5d | 2011-04-04 A | 2011-04-11 A |  | 100% |  |  |  |
| 11 | 1.2.5.1 | Diagrama de la Organización |  | 0.5d | 2011-04-04 A | 2011-04-04 A | 9SS | 100% |  |  | start no earlier than 2011-04-04 |
| 12 | 1.2.5.2 | Stakeholders Empresariales |  | 0.5d | 2011-04-04 A | 2011-04-04 A | 11 | 100% |  |  |  |
| 13 | 1.2.5.3 | Diagrama de Objetivos |  | 1d | 2011-04-04 A | 2011-04-04 A | 11SS | 100% |  |  |  |
| 14 | 1.2.5.4 | Mapa de Procesos |  | 0.5d | 2011-04-05 A | 2011-04-05 A | 13 | 100% |  |  |  |
| 15 | 1.2.5.5 | Justificación de Procesos - Objetivos |  | 1.5d | 2011-04-05 A | 2011-04-06 A | 12, 13 | 100% |  |  | start no earlier than 2011-04-05 |
| 16 | 1.2.5.6 | Integración de artefactos inciales |  | 3d | 2011-04-06 A | 2011-04-11 A | 15, 12 | 100% |  |  |  |
| 17 | 1.2.5.7 | Primera reunión con el cliente |  | 2h | 2011-04-08 A | 2011-04-08 A |  | 100% |  |  | finish no earlier than 2011-04-08 |
| 18 | 1.2.5.8 | Primer envío a QA | milestone | 0d | 2011-04-11 A | 2011-04-11 A |  | 100% |  |  | start no earlier than 2011-04-11 |
| 19 | 1.2.6 | **Diseño de Procesos** |  | 42.5d | 2011-04-06 A | 2011-06-08 |  | 36% | 27.27d | 29d |  |
| 20 | 1.2.6.1 | Elaboración de la Memoria Parcial |  | 3d | 2011-04-06 A | 2011-04-11 A | 15 | 100% |  |  |  |
| 21 | 1.2.6.2 | Primera Revisión de Memoria Parcial |  | 2d | 2011-04-13 A | 2011-04-14 A | 20 | 100% |  |  | finish no earlier than 2011-04-14 |
| 22 | 1.2.6.3 | Segunda reunión con el cliente |  | 0.5h | 2011-04-15 A | 2011-04-15 A |  | 100% |  |  | start no earlier than 2011-04-15 |
| 23 | 1.2.6.4 | Corección de Memoria Parcial |  | 2d | 2011-04-15 A | 2011-04-18 A | 21 | 100% |  |  |  |
| 24 | 1.2.6.5 | Entrega de Memoria Parcial | milestone | 0d | 2011-04-18 A | 2011-04-18 A | 23 | 100% |  |  | start no earlier than 2011-04-18 |
| 25 | 1.2.6.6 | Exposición Memoria Parcial |  | 1d | 2011-04-25 A | 2011-04-25 A | 24 | 100% |  |  | start no earlier than 2011-04-25 |
| 26 | 1.2.6.7 | Diagramación de Procesos de Primer Nivel |  | 2d | 2011-04-20 A | 2011-04-25 A |  | 100% |  |  | start no earlier than 2011-04-20 |
| 27 | 1.2.6.8 | Integración de Procesos de Primer Nivel |  | 5d | 2011-04-26 A | 2011-05-02 | 26 | 50% | 2.5d | 0d |  |
| 28 | 1.2.6.9 | Segundo envio a QA | milestone | 0d | 2011-05-04 A | 2011-05-04 A |  | 100% |  |  | start no earlier than 2011-05-04 |
| 29 | 1.2.6.10 | Diagramación de Procesos de Segundo Nivel |  | 20d | 2011-05-03 | 2011-05-30 | 27 |  |  | 0d |  |
| 30 | 1.2.6.11 | Tercer envío a QA | milestone | 0d | 2011-06-08 | 2011-06-08 | 29 |  |  | 29d | start no earlier than 2011-06-08 |

| ID | WBS | Task | Type | Duration | Start | Finish | Predecessors | Total slack | Constraint |
| --- | --- | --- | --- | --- | --- | --- | --- | --- | --- |
| 31 | 1.3 | **Cierre de ciclo** |  | 35d | 2011-05-31 | 2011-07-18 |  | 0d |  |
| 32 | 1.3.1 | **Memoria Parcial** |  | 23d | 2011-05-31 | 2011-06-30 |  | 0d |  |
| 33 | 1.3.1.1 | Elaboración de la versión final de la Memoria Parcial |  | 12d | 2011-05-31 | 2011-06-15 | 29 | 0d |  |
| 34 | 1.3.1.2 | Segunda Revisión de la Memoria Parcial |  | 6d | 2011-06-16 | 2011-06-23 | 33 | 0d |  |
| 35 | 1.3.1.3 | Corección de Memoria Parcial |  | 5d | 2011-06-24 | 2011-06-30 | 34 | 0d |  |
| 36 | 1.3.1.4 | Entrega Memoria Parcial | milestone | 0d | 2011-06-30 | 2011-06-30 | 35 | 0d |  |
| 37 | 1.3.2 | **Presentación Final** |  | 12d | 2011-07-01 | 2011-07-18 |  | 0d |  |
| 38 | 1.3.2.1 | Preparación de la diapositiva final |  | 11d | 2011-07-01 | 2011-07-15 | 36 | 0d |  |
| 39 | 1.3.2.2 | Exposición |  | 1d | 2011-07-18 | 2011-07-18 | 38 | 0d | start no earlier than 2011-07-11 |
